# SitioWeb-VinosLicoresGus

Schedule from MS Project, 2017-05-06 to 2017-08-19, costs in $, A marks actual dates.
Hewlett-Packard

## Calendars

- Estándar: Mon-Fri 09:00-13:00, 15:00-19:00; Sat-Sun off. Exceptions (off unless hours are given): 2017-05-20 09:00-13:00, 15:00-19:00, 2017-05-27 09:00-13:00, 15:00-19:00, 2017-06-03 09:00-13:00, 15:00-19:00, 2017-06-17 09:00-13:00, 15:00-19:00, 2017-06-24 09:00-13:00, 15:00-19:00, 2017-07-01 09:00-13:00, 15:00-19:00, 2017-07-08 09:00-13:00, 15:00-19:00, 2017-07-15 09:00-13:00, 15:00-19:00, 2017-07-22 09:00-13:00, 15:00-19:00, 2017-07-29 09:00-13:00, 15:00-19:00, 2017-08-05 09:00-13:00, 15:00-19:00, 2017-08-12 09:00-13:00, 15:00-19:00.

## Resources

| Resource |
| --- |
| YSCG_ADMINCONF |
| BGRA_PROGRA |
| JCGC_DISEÑADOR |
| BGRA_ANALISTA |
| BGRA_VV |
| YSCG_ADMINPRO |
| Cliente |
| JCGC_ASEGURADOR |
| JCGC_TÉSTER |

## Schedule

| ID | WBS | Task | Type | Duration | Start | Finish | Predecessors | Complete | Remaining | Actual start | Total slack | Free slack | Constraint | Resources | Work | Actual work | Cost | Actual cost |
| --- | --- | --- | --- | --- | --- | --- | --- | --- | --- | --- | --- | --- | --- | --- | --- | --- | --- | --- |
| 1 | 1 | **Plan preliminar** |  | 2.62d | 2017-05-08 16:30 A | 2017-05-11 11:30 A |  | 100% |  |  |  |  |  |  | 5h | 5h | 485 | 485 |
| 2 | 1.1 | Generar el WBS del producto inicial |  | 1h | 2017-05-08 16:30 A | 2017-05-08 17:30 A |  | 100% |  |  |  |  |  | YSCG_ADMINCONF; BGRA_ANALISTA; YSCG_ADMINPRO | 1h | 1h | 97 | 97 |
| 3 | 1.2 | Generar project charter |  | 1h | 2017-05-09 16:30 A | 2017-05-09 17:30 A | 2 | 100% |  |  |  |  |  | YSCG_ADMINCONF; YSCG_ADMINPRO; JCGC_ASEGURADOR | 1h | 1h | 97 | 97 |
| 4 | 1.3 | Plan de proyecto preliminar |  | 2h | 2017-05-10 10:30 A | 2017-05-10 12:30 A | 3 | 100% |  |  |  |  |  | YSCG_ADMINCONF; JCGC_ASEGURADOR; YSCG_ADMINPRO | 2h | 2h | 194 | 194 |
| 5 | 1.4 | Generar matriz de responsabilidades |  | 1h | 2017-05-11 10:30 A | 2017-05-11 11:30 A | 4 | 100% |  |  |  |  |  | YSCG_ADMINCONF; JCGC_ASEGURADOR; YSCG_ADMINPRO | 1h | 1h | 97 | 97 |
| 6 | 2 | **Sitio Web Vinos y Licores Gus** |  | 83.75d | 2017-05-12 08:00 | 2017-08-19 16:00 |  | 4% | 80.35d | 2017-05-12 16:30 |  |  |  |  | 949h | 44h | 82,379 | 4,290 |
| 7 | 2.1 | Formación del equipo de desarrollo |  | 8h | 2017-05-12 16:30 A | 2017-05-15 16:30 |  | 25% | 6h |  | 73.05d | 0d | finish no earlier than 2017-05-12 20:30 | YSCG_ADMINCONF | 8h | 2h | 776 | 194 |
| 8 | 2.2 | **Especificación de requerimientos** |  | 11.31d | 2017-05-17 16:30 A | 2017-05-30 20:30 | 7 | 36% | 7.22d |  | 68d |  |  |  | 69h | 26h | 6,285 | 2,416 |
| 9 | 2.2.1 | **Elicitación de requerimientos** |  | 7.31d | 2017-05-17 16:30 A | 2017-05-25 19:00 |  | 57% | 3.17d |  | 72d |  |  |  | 43h | 26h | 4,019 | 2,416 |
| 10 | 2.2.1.1 | Generar lista de proveedores |  | 1h | 2017-05-17 16:30 A | 2017-05-17 17:30 A |  | 100% |  |  |  |  | start no earlier than 2017-05-17 16:30 | YSCG_ADMINCONF; BGRA_ANALISTA | 2h | 2h | 188 | 188 |
| 11 | 2.2.1.2 | Evaluar los proveedores de requerimientos a entrevistar |  | 4h | 2017-05-17 17:30 A | 2017-05-18 11:30 A | 10 | 100% |  |  |  |  |  | BGRA_PROGRA; YSCG_ADMINCONF; BGRA_ANALISTA | 12h | 12h | 1,136 | 1,136 |
| 12 | 2.2.1.3 | Definir la estrategia de recolección de requerimientos |  | 1h | 2017-05-19 16:30 | 2017-05-19 17:30 |  |  |  |  | 77.19d |  | start no earlier than 2017-05-19 16:30 | BGRA_ANALISTA | 1h |  | 91 |  |
| 13 | 2.2.1.4 | Planificar reuniones de elicitación de requerimientos |  | 4h | 2017-05-20 15:00 | 2017-05-20 20:30 |  |  |  |  | 76d |  | finish no earlier than 2017-05-20 20:30 | BGRA_ANALISTA; YSCG_ADMINPRO | 8h |  | 784 |  |
| 14 | 2.2.1.5 | Identificar los procesos del sistema |  | 1d | 2017-05-20 16:30 | 2017-05-22 16:30 |  |  |  |  | 75.31d |  | start no earlier than 2017-05-20 16:30 | BGRA_ANALISTA | 8h |  | 728 |  |
| 15 | 2.2.1.6 | Identificar los requerimientos funcionales |  | 1d | 2017-05-23 16:30 A | 2017-05-24 16:30 A | 14 | 100% |  |  |  |  |  | BGRA_ANALISTA | 8h | 8h | 728 | 728 |
| 16 | 2.2.1.7 | Identificar los requerimientos no funcionales |  | 4h | 2017-05-25 15:00 A | 2017-05-25 19:00 A | 15 | 100% |  |  |  |  | finish no earlier than 2017-05-25 20:30 | BGRA_ANALISTA | 4h | 4h | 364 | 364 |
| 17 | 2.2.2 | **Especificación de requerimientos** |  | 2.62d | 2017-05-25 09:00 | 2017-05-27 16:00 |  |  |  |  | 70.38d |  |  |  | 4h |  | 376 |  |
| 18 | 2.2.2.1 | Describrir los requerimientos |  | 2h | 2017-05-25 09:00 | 2017-05-25 11:00 |  |  |  |  | 72.75d |  | start no earlier than 2017-05-25 08:00 | BGRA_ANALISTA | 2h |  | 182 |  |
| 19 | 2.2.2.2 | Evaluar los requerimientos |  | 2h | 2017-05-25 09:00 | 2017-05-27 16:00 |  |  |  |  | 70.38d |  | finish no earlier than 2017-05-27 16:00 | YSCG_ADMINCONF; BGRA_ANALISTA | 2h |  | 194 |  |
| 20 | 2.2.3 | **Gestión de requerimientos** |  | 4d | 2017-05-26 09:00 | 2017-05-30 20:30 |  |  |  |  | 68d |  |  |  | 16h |  | 1,436 |  |
| 21 | 2.2.3.1 | Priorizar los requerimientos |  | 1h | 2017-05-29 16:30 | 2017-05-29 17:30 |  |  |  |  | 69.19d |  | start no earlier than 2017-05-29 16:30 | BGRA_PROGRA | 1h |  | 96 |  |
| 22 | 2.2.3.2 | Almacenar los requerimientos en un repositorio central |  | 5h | 2017-05-26 09:00 | 2017-05-26 16:00 |  |  |  |  | 71.38d |  | finish no earlier than 2017-05-26 16:00 | BGRA_ANALISTA; JCGC_ASEGURADOR | 10h |  | 885 |  |
| 23 | 2.2.3.3 | Asignar al grupo de desarrollo los requerimientos del software |  | 1h | 2017-05-30 18:00 | 2017-05-30 20:30 |  |  |  |  | 68d |  | finish no earlier than 2017-05-30 20:30 | BGRA_ANALISTA | 1h |  | 91 |  |
| 24 | 2.2.3.4 | Administrar los cambios en los requerimientos |  | 2h | 2017-05-30 17:00 | 2017-05-30 20:30 |  |  |  |  | 68d |  | finish no earlier than 2017-05-30 20:30 | BGRA_ANALISTA | 2h |  | 182 |  |
| 25 | 2.2.3.5 | Administrar la trazabilidad de los requerimientos |  | 2h | 2017-05-30 17:00 | 2017-05-30 20:30 |  |  |  |  | 68d |  | finish no earlier than 2017-05-30 20:30 | BGRA_ANALISTA | 2h |  | 182 |  |
| 26 | 2.2.4 | Calificación V & V de requerimientos |  | 2h | 2017-05-30 16:30 | 2017-05-30 18:30 |  |  |  |  | 68.06d | 0d | start no earlier than 2017-05-30 16:30 | BGRA_VV; BGRA_ANALISTA; JCGC_ASEGURADOR | 6h |  | 454 |  |
| 27 | 2.2.5 | Hito de especificación de requerimientos | milestone | 0d | 2017-05-30 18:30 | 2017-05-30 18:30 | 26 |  |  |  | 68.06d |  | start no earlier than 2017-05-30 16:30 | YSCG_ADMINCONF; BGRA_ANALISTA |  |  |  |  |

| ID | WBS | Task | Duration | Start | Finish | Predecessors | Complete | Remaining | Total slack | Free slack | Constraint | Resources | Work | Actual work | Cost | Actual cost |
| --- | --- | --- | --- | --- | --- | --- | --- | --- | --- | --- | --- | --- | --- | --- | --- | --- |
| 28 | 2.3 | **Planificación** | 11.12d | 2017-05-31 15:00 A | 2017-06-14 16:00 |  | 13% | 9.67d | 56.38d |  |  |  | 85h | 16h | 8,925 | 1,680 |
| 29 | 2.3.1 | Definición de ciclo de vida | 1.12d | 2017-05-31 15:00 A | 2017-06-01 16:00 |  | 89% | 0.12d | 66.38d |  | finish no earlier than 2017-06-01 16:00 | YSCG_ADMINPRO | 9h | 8h | 945 | 840 |
| 30 | 2.3.2 | Politicas del proyecto | 1h | 2017-06-01 18:00 | 2017-06-01 20:30 |  |  |  | 66d |  | finish no earlier than 2017-06-01 20:30 | YSCG_ADMINPRO | 1h |  | 105 |  |
| 31 | 2.3.3 | Actualizar el plan de proyecto | 1h | 2017-06-01 09:00 | 2017-06-01 10:00 |  |  |  | 66.88d |  | start no earlier than 2017-06-01 08:00 | YSCG_ADMINPRO | 1h |  | 105 |  |
| 32 | 2.3.4 | **Estimación** | 1.62d | 2017-06-01 08:00 A | 2017-06-02 16:00 |  | 26% | 1.2d | 65.38d |  |  |  | 19h | 5h | 1,995 | 525 |
| 33 | 2.3.4.1 | Actualizar WBS/calendario | 5h | 2017-06-01 08:00 A | 2017-06-01 16:00 A |  | 100% |  |  |  | finish no earlier than 2017-06-05 20:30 | YSCG_ADMINPRO | 5h | 5h | 525 | 525 |
| 34 | 2.3.4.2 | Diccionario del WBS | 9h | 2017-06-01 09:00 | 2017-06-02 10:00 |  |  |  | 65.88d |  | start no earlier than 2017-06-01 08:00 | YSCG_ADMINPRO | 9h |  | 945 |  |
| 35 | 2.3.4.3 | Costos | 5h | 2017-06-02 09:00 | 2017-06-02 16:00 |  |  |  | 65.38d |  | finish no earlier than 2017-06-02 16:00 | YSCG_ADMINPRO | 5h |  | 525 |  |
| 36 | 2.3.5 | **Riesgos** | 7d | 2017-06-03 08:00 A | 2017-06-12 19:00 |  | 4% | 6.7d | 58d |  |  |  | 32h | 3h | 3,360 | 315 |
| 37 | 2.3.5.1 | Identificación de riesgos | 3h | 2017-06-03 08:00 A | 2017-06-03 12:00 A |  | 100% |  |  |  | start no earlier than 2017-06-13 16:30 | YSCG_ADMINPRO | 3h | 3h | 315 | 315 |
| 38 | 2.3.5.2 | Base de datos de riesgos | 2.62d | 2017-06-03 08:00 A | 2017-06-06 16:00 |  |  | 2.62d | 60.38d | 0d | finish no earlier than 2017-06-06 16:00 |  |  |  |  |  |
| 39 | 2.3.5.3 | Análisis cuantitativo de riesgos del proyecto | 1d | 2017-06-06 16:00 | 2017-06-07 16:00 | 38 |  |  | 60.38d | 0d | finish no earlier than 2017-06-03 16:00 |  |  |  |  |  |
| 40 | 2.3.5.4 | Análisis cualitativo de riesgo del proyecto | 1d | 2017-06-07 16:00 | 2017-06-08 16:00 | 39 |  |  | 60.38d |  | finish no earlier than 2017-06-03 16:00 |  |  |  |  |  |
| 41 | 2.3.5.5 | Asignación de proridades | 13h | 2017-06-08 08:00 A | 2017-06-09 16:00 |  |  | 13h | 59.38d |  | finish no earlier than 2017-06-09 16:00 | YSCG_ADMINPRO | 13h |  | 1,365 |  |
| 42 | 2.3.5.6 | Plan de mitigación y contingencia | 2d | 2017-06-09 08:00 A | 2017-06-12 19:00 |  |  | 2d | 58d |  | finish no earlier than 2017-06-12 16:00 | YSCG_ADMINPRO | 16h |  | 1,680 |  |
| 43 | 2.3.6 | **2.3.6 Aseguramiento de la calidad** | 1.62d | 2017-06-13 08:00 A | 2017-06-14 16:00 |  |  | 1.62d | 56.38d |  |  |  | 18h |  | 1,890 |  |
| 44 | 2.3.6.1 | Plan de gestión de la configuración | 1.62d | 2017-06-13 08:00 A | 2017-06-14 16:00 |  |  | 1.62d | 56.38d |  | finish no earlier than 2017-06-14 16:00 | YSCG_ADMINPRO | 13h |  | 1,365 |  |
| 45 | 2.3.6.2 | Junta de arranque de construcción | 5h | 2017-06-14 08:00 A | 2017-06-14 16:00 |  |  | 5h | 56.38d |  | finish no earlier than 2017-06-13 16:00 | YSCG_ADMINPRO | 5h |  | 525 |  |
| 46 | 2.3.7 | Hito de planeación | 0.62d | 2017-06-14 09:00 | 2017-06-14 16:00 |  |  |  | 56.38d |  | start no earlier than 2017-06-14 08:00 | YSCG_ADMINPRO | 5h |  | 525 |  |
| 47 | 2.4 | **Diseño preliminar** | 8d | 2017-06-14 09:00 | 2017-06-22 19:00 |  |  |  | 46d | 0d |  |  | 70h |  | 6,777 |  |
| 48 | 2.4.1 | Definión de arquitectura | 2h | 2017-06-14 09:00 | 2017-06-14 11:00 |  |  |  | 53.75d |  | start no earlier than 2017-06-14 08:00 | JCGC_DISEÑADOR | 2h |  | 198 |  |
| 49 | 2.4.2 | **Diagramas UML** | 3.88d | 2017-06-14 09:00 | 2017-06-17 18:00 |  |  |  | 50.12d |  |  |  | 31h |  | 3,069 |  |
| 50 | 2.4.2.1 | Diagramas de casos de uso | 1.62d | 2017-06-14 09:00 | 2017-06-15 16:00 |  |  |  | 50.12d | 0d | finish no earlier than 2017-06-15 16:00 | JCGC_DISEÑADOR | 13h |  | 1,287 |  |
| 51 | 2.4.2.2 | Diagramas de secuencia | 1d | 2017-06-15 16:00 | 2017-06-16 16:00 | 50 |  |  | 50.12d | 0d |  | JCGC_DISEÑADOR | 8h |  | 792 |  |
| 52 | 2.4.2.3 | Diagrama de clases | 6h | 2017-06-16 16:00 | 2017-06-17 12:00 | 51 |  |  | 50.12d | 0d | finish no earlier than 2017-06-16 16:00 | JCGC_DISEÑADOR | 6h |  | 594 |  |
| 53 | 2.4.2.4 | Diagrama de componentes | 2h | 2017-06-17 12:00 | 2017-06-17 16:00 | 52 |  |  | 50.12d | 0d |  | JCGC_DISEÑADOR | 2h |  | 198 |  |
| 54 | 2.4.2.5 | Diagrama de despliegue | 2h | 2017-06-17 16:00 | 2017-06-17 18:00 | 53 |  |  | 50.12d |  |  | JCGC_DISEÑADOR | 2h |  | 198 |  |
| 55 | 2.4.3 | Mapa de navegación | 2h | 2017-06-17 09:00 | 2017-06-17 11:00 |  |  |  | 50.12d | 0.75d | start no earlier than 2017-06-17 08:00 | JCGC_DISEÑADOR | 2h |  | 198 |  |
| 56 | 2.4.4 | Maquetación/ bocetos | 0.62d | 2017-06-19 09:00 | 2017-06-19 16:00 | 55 |  |  | 49.38d |  | finish no earlier than 2017-06-19 16:00 | JCGC_DISEÑADOR | 5h |  | 495 |  |

| ID | WBS | Task | Type | Duration | Start | Finish | Predecessors | Total slack | Free slack | Constraint | Resources | Work | Cost |
| --- | --- | --- | --- | --- | --- | --- | --- | --- | --- | --- | --- | --- | --- |
| 57 | 2.4.5 | **Base de datos** |  | 3d | 2017-06-20 09:00 | 2017-06-22 19:00 |  | 46d |  |  |  | 21h | 2,079 |
| 58 | 2.4.5.1 | Diagrama entidad- relación |  | 5h | 2017-06-20 09:00 | 2017-06-20 16:00 |  | 46.38d | 0.38d | finish no earlier than 2017-06-20 16:00 | JCGC_DISEÑADOR | 5h | 495 |
| 59 | 2.4.5.2 | Diagrama relacional |  | 1d | 2017-06-21 09:00 | 2017-06-21 19:00 | 58 | 46d | 0d | start no earlier than 2017-06-21 08:00 | JCGC_DISEÑADOR | 8h | 792 |
| 60 | 2.4.5.3 | Diccionario de datos |  | 1d | 2017-06-22 09:00 | 2017-06-22 19:00 | 59 | 46d |  |  | JCGC_DISEÑADOR | 8h | 792 |
| 61 | 2.4.6 | Integración V&V |  | 3h | 2017-06-22 09:00 | 2017-06-22 12:00 |  | 46.62d |  | start no earlier than 2017-06-22 08:00 | YSCG_ADMINCONF; JCGC_DISEÑADOR; BGRA_VV | 9h | 738 |
| 62 | 2.4.7 | Hito de diseño preliminar | milestone | 0d | 2017-06-22 08:00 | 2017-06-22 08:00 |  | 47d | 1d | start no earlier than 2017-06-22 08:00 | YSCG_ADMINCONF |  |  |
| 63 | 2.5 | **Diseño detallado** |  | 4.75d | 2017-06-23 08:00 | 2017-06-28 16:00 | 47, 62 |  |  |  |  | 84h | 7,970 |
| 64 | 2.5.1 | Refinamiento del diseño |  | 1.62d | 2017-06-23 09:00 | 2017-06-24 16:00 |  | 47.38d |  | finish no earlier than 2017-06-24 16:00 | JCGC_DISEÑADOR; BGRA_ANALISTA | 26h | 2,470 |
| 65 | 2.5.2 | Pruebas unitarias o unidad |  | 3d | 2017-06-26 09:00 | 2017-06-28 19:00 |  | 44d |  | start no earlier than 2017-06-26 08:00 | JCGC_DISEÑADOR; BGRA_ANALISTA | 48h | 4,560 |
| 66 | 2.5.3 | Hito de diseño detallado |  | 0.62d | 2017-06-28 09:00 | 2017-06-28 16:00 |  | 44.38d |  | finish no earlier than 2017-06-28 16:00 | YSCG_ADMINCONF; BGRA_ANALISTA | 10h | 940 |
| 67 | 2.6 | **Codificación** |  | 24.62d | 2017-06-29 09:00 | 2017-07-27 16:00 | 63 | 1d | 0d |  |  | 405h | 38,925 |
| 68 | 2.6.1 | Codificación de la base de datos |  | 5h | 2017-06-29 09:00 | 2017-06-29 16:00 |  | 24.38d |  | start no earlier than 2017-06-29 08:00 | BGRA_PROGRA | 5h | 480 |
| 69 | 2.6.2 | Index |  | 4h | 2017-06-30 09:00 | 2017-06-30 13:00 |  | 23.5d |  | start no earlier than 2017-06-30 08:00 | BGRA_PROGRA | 4h | 384 |
| 70 | 2.6.3 | **Módulo de usuarios** |  | 3.75d | 2017-06-30 08:00 | 2017-07-04 16:00 |  |  |  |  |  | 50h | 4,800 |
| 71 | 2.6.3.1 | Clase de usuarios |  | 2h | 2017-07-01 09:00 | 2017-07-01 11:00 |  | 22.75d |  |  | BGRA_PROGRA | 2h | 192 |
| 72 | 2.6.3.2 | **Controlador** |  | 1.62d | 2017-07-03 09:00 | 2017-07-04 16:00 |  | 20.38d |  |  |  | 38h | 3,648 |
| 73 | 2.6.3.2.1 | Alta |  | 7h | 2017-07-03 09:00 | 2017-07-03 18:00 |  | 21.12d |  | start no earlier than 2017-07-03 08:00 | BGRA_PROGRA | 7h | 672 |
| 74 | 2.6.3.2.2 | Consulta |  | 13h | 2017-07-03 09:00 | 2017-07-04 16:00 |  | 20.38d |  | finish no earlier than 2017-07-04 16:00 | BGRA_PROGRA | 13h | 1,248 |
| 75 | 2.6.3.2.3 | Modificación |  | 13h | 2017-07-03 09:00 | 2017-07-04 16:00 |  | 20.38d |  | finish no earlier than 2017-07-04 16:00 | BGRA_PROGRA | 13h | 1,248 |
| 76 | 2.6.3.2.4 | Baja |  | 5h | 2017-07-04 09:00 | 2017-07-04 16:00 |  | 20.38d |  | finish no earlier than 2017-07-04 16:00 | BGRA_PROGRA | 5h | 480 |
| 77 | 2.6.3.3 | Vistas/interfaz |  | 5h | 2017-07-04 09:00 | 2017-07-04 16:00 |  | 39.38d |  | finish no earlier than 2017-07-04 16:00 | BGRA_PROGRA | 5h | 480 |
| 78 | 2.6.3.4 | Reportes |  | 5h | 2017-07-04 09:00 | 2017-07-04 16:00 |  | 39.38d |  | finish no earlier than 2017-07-04 16:00 | BGRA_PROGRA | 5h | 480 |
| 79 | 2.6.4 | **Módulo de categorías** |  | 2.75d | 2017-07-05 08:00 | 2017-07-07 16:00 |  |  |  |  |  | 91h | 8,736 |
| 80 | 2.6.4.1 | Clase de categorías |  | 13h | 2017-07-05 09:00 | 2017-07-06 16:00 |  | 37.38d |  | finish no earlier than 2017-07-06 16:00 | BGRA_PROGRA | 13h | 1,248 |

| ID | WBS | Task | Duration | Start | Finish | Total slack | Constraint | Resources | Work | Cost |
| --- | --- | --- | --- | --- | --- | --- | --- | --- | --- | --- |
| 81 | 2.6.4.2 | **Controlador** | 1.75d | 2017-07-05 08:00 | 2017-07-06 16:00 |  |  |  | 52h | 4,992 |
| 82 | 2.6.4.2.1 | Alta | 13h | 2017-07-05 09:00 | 2017-07-06 16:00 | 37.38d | finish no earlier than 2017-07-06 16:00 | BGRA_PROGRA | 13h | 1,248 |
| 83 | 2.6.4.2.2 | Consulta | 13h | 2017-07-05 09:00 | 2017-07-06 16:00 | 37.38d | finish no earlier than 2017-07-06 16:00 | BGRA_PROGRA | 13h | 1,248 |
| 84 | 2.6.4.2.3 | Modificación | 13h | 2017-07-06 09:00 | 2017-07-07 16:00 | 36.38d | finish no earlier than 2017-07-07 16:00 | BGRA_PROGRA | 13h | 1,248 |
| 85 | 2.6.4.2.4 | Baja | 13h | 2017-07-06 09:00 | 2017-07-07 16:00 | 36.38d | finish no earlier than 2017-07-07 16:00 | BGRA_PROGRA | 13h | 1,248 |
| 86 | 2.6.4.3 | Vistas/interfaz | 13h | 2017-07-06 09:00 | 2017-07-07 16:00 | 36.38d | finish no earlier than 2017-07-07 16:00 | BGRA_PROGRA | 13h | 1,248 |
| 87 | 2.6.4.4 | Reportes | 13h | 2017-07-06 09:00 | 2017-07-07 16:00 | 36.38d | finish no earlier than 2017-07-07 16:00 | BGRA_PROGRA | 13h | 1,248 |
| 88 | 2.6.5 | **Módulo de productos** | 6.62d | 2017-07-08 09:00 | 2017-07-15 16:00 | 10.38d |  |  | 80h | 7,680 |
| 89 | 2.6.5.1 | Clases de producto | 2h | 2017-07-08 09:00 | 2017-07-08 11:00 | 16.75d | start no earlier than 2017-07-08 08:00 | BGRA_PROGRA | 2h | 192 |
| 90 | 2.6.5.2 | **Controlador** | 2.62d | 2017-07-08 09:00 | 2017-07-11 16:00 | 14.38d |  |  | 52h | 4,992 |
| 91 | 2.6.5.2.1 | Alta | 13h | 2017-07-08 09:00 | 2017-07-10 16:00 | 15.38d | finish no earlier than 2017-07-10 16:00 | BGRA_PROGRA | 13h | 1,248 |
| 92 | 2.6.5.2.2 | Consulta | 13h | 2017-07-08 09:00 | 2017-07-10 16:00 | 15.38d | finish no earlier than 2017-07-10 16:00 | BGRA_PROGRA | 13h | 1,248 |
| 93 | 2.6.5.2.3 | Modificación | 13h | 2017-07-10 09:00 | 2017-07-11 16:00 | 14.38d | finish no earlier than 2017-07-11 16:00 | BGRA_PROGRA | 13h | 1,248 |
| 94 | 2.6.5.2.4 | Baja | 13h | 2017-07-10 09:00 | 2017-07-11 16:00 | 14.38d | finish no earlier than 2017-07-11 16:00 | BGRA_PROGRA | 13h | 1,248 |
| 95 | 2.6.5.3 | Vistas/interfaz | 2.62d | 2017-07-12 09:00 | 2017-07-14 16:00 | 11.38d | finish no earlier than 2017-07-14 16:00 | BGRA_PROGRA | 21h | 2,016 |
| 96 | 2.6.5.4 | Reportes | 5h | 2017-07-15 09:00 | 2017-07-15 16:00 | 10.38d | finish no earlier than 2017-07-15 16:00 | BGRA_PROGRA | 5h | 480 |
| 97 | 2.6.6 | **Módulo de ventas** | 2d | 2017-07-17 08:00 | 2017-07-18 18:00 |  |  |  | 37h | 3,552 |
| 98 | 2.6.6.1 | Clases de ventas | 2h | 2017-07-17 09:00 | 2017-07-17 11:00 | 9.75d |  | BGRA_PROGRA | 2h | 192 |
| 99 | 2.6.6.2 | **Controlador** | 1.62d | 2017-07-17 09:00 | 2017-07-18 16:00 | 8.38d |  |  | 25h | 2,400 |
| 100 | 2.6.6.2.1 | Alta | 7h | 2017-07-17 09:00 | 2017-07-17 18:00 | 9.12d |  | BGRA_PROGRA | 7h | 672 |
| 101 | 2.6.6.2.2 | Consulta | 6h | 2017-07-17 09:00 | 2017-07-17 17:00 | 9.25d |  | BGRA_PROGRA | 6h | 576 |
| 102 | 2.6.6.2.3 | Modificación | 7h | 2017-07-17 09:00 | 2017-07-17 18:00 | 9.12d |  | BGRA_PROGRA | 7h | 672 |
| 103 | 2.6.6.2.4 | Baja | 5h | 2017-07-18 09:00 | 2017-07-18 16:00 | 8.38d | finish no earlier than 2017-07-18 16:00 | BGRA_PROGRA | 5h | 480 |
| 104 | 2.6.6.3 | Vistas/interfaz | 5h | 2017-07-18 09:00 | 2017-07-18 16:00 | 27.38d | finish no earlier than 2017-07-18 16:00 | BGRA_PROGRA | 5h | 480 |
| 105 | 2.6.6.4 | Reportes | 5h | 2017-07-18 09:00 | 2017-07-18 16:00 | 27.38d | finish no earlier than 2017-07-18 16:00 | BGRA_PROGRA | 5h | 480 |

| ID | WBS | Task | Duration | Start | Finish | Total slack | Constraint | Resources | Work | Cost |
| --- | --- | --- | --- | --- | --- | --- | --- | --- | --- | --- |
| 106 | 2.6.7 | **Módulo comentarios** | 1.25d | 2017-07-18 12:00 | 2017-07-19 16:00 | 7.38d |  |  | 32h | 3,072 |
| 107 | 2.6.7.1 | Clases de comentarios | 2h | 2017-07-18 12:00 | 2017-07-18 16:00 | 8.38d | finish no earlier than 2017-07-18 16:00 | BGRA_PROGRA | 2h | 192 |
| 108 | 2.6.7.2 | **Controlador** | 0.62d | 2017-07-19 09:00 | 2017-07-19 16:00 | 7.38d |  |  | 20h | 1,920 |
| 109 | 2.6.7.2.1 | Alta | 5h | 2017-07-19 09:00 | 2017-07-19 16:00 | 7.38d | finish no earlier than 2017-07-19 16:00 | BGRA_PROGRA | 5h | 480 |
| 110 | 2.6.7.2.2 | Consulta | 5h | 2017-07-19 09:00 | 2017-07-19 16:00 | 7.38d | finish no earlier than 2017-07-19 16:00 | BGRA_PROGRA | 5h | 480 |
| 111 | 2.6.7.2.3 | Modificación | 5h | 2017-07-19 09:00 | 2017-07-19 16:00 | 7.38d | finish no earlier than 2017-07-19 16:00 | BGRA_PROGRA | 5h | 480 |
| 112 | 2.6.7.2.4 | Baja | 5h | 2017-07-19 09:00 | 2017-07-19 16:00 | 7.38d | finish no earlier than 2017-07-19 16:00 | BGRA_PROGRA | 5h | 480 |
| 113 | 2.6.7.3 | Vistas/interfaz | 5h | 2017-07-19 09:00 | 2017-07-19 16:00 | 7.38d | finish no earlier than 2017-07-19 16:00 | BGRA_PROGRA | 5h | 480 |
| 114 | 2.6.7.4 | Reportes | 5h | 2017-07-19 09:00 | 2017-07-19 16:00 | 7.38d | finish no earlier than 2017-07-19 16:00 | BGRA_PROGRA | 5h | 480 |
| 115 | 2.6.8 | **Módulo promociones** | 2.62d | 2017-07-19 09:00 | 2017-07-21 16:00 | 5.38d |  |  | 32h | 3,072 |
| 116 | 2.6.8.1 | Clases de promociones | 2h | 2017-07-19 09:00 | 2017-07-19 11:00 | 7.75d | start no earlier than 2017-07-19 08:00 | BGRA_PROGRA | 2h | 192 |
| 117 | 2.6.8.2 | **Controlador** | 0.62d | 2017-07-20 09:00 | 2017-07-20 16:00 | 6.38d |  |  | 20h | 1,920 |
| 118 | 2.6.8.2.1 | Alta | 5h | 2017-07-20 09:00 | 2017-07-20 16:00 | 6.38d | finish no earlier than 2017-07-20 16:00 | BGRA_PROGRA | 5h | 480 |
| 119 | 2.6.8.2.2 | Consulta | 5h | 2017-07-20 09:00 | 2017-07-20 16:00 | 6.38d | finish no earlier than 2017-07-20 16:00 | BGRA_PROGRA | 5h | 480 |
| 120 | 2.6.8.2.3 | Modificación | 5h | 2017-07-20 09:00 | 2017-07-20 16:00 | 6.38d | finish no earlier than 2017-07-20 16:00 | BGRA_PROGRA | 5h | 480 |
| 121 | 2.6.8.2.4 | Baja | 5h | 2017-07-20 09:00 | 2017-07-20 16:00 | 6.38d | finish no earlier than 2017-07-20 16:00 | BGRA_PROGRA | 5h | 480 |
| 122 | 2.6.8.3 | Vistas/interfaz | 5h | 2017-07-21 09:00 | 2017-07-21 16:00 | 5.38d | finish no earlier than 2017-07-21 16:00 | BGRA_PROGRA | 5h | 480 |
| 123 | 2.6.8.4 | Reportes | 5h | 2017-07-21 09:00 | 2017-07-21 16:00 | 5.38d | finish no earlier than 2017-07-21 16:00 | BGRA_PROGRA | 5h | 480 |
| 124 | 2.6.9 | Módulo mi carrito | 4d | 2017-07-21 09:00 | 2017-07-25 19:00 | 2d | start no earlier than 2017-07-21 08:00 | BGRA_PROGRA | 32h | 3,072 |
| 125 | 2.6.10 | **Módulo contacto** | 1.62d | 2017-07-26 09:00 | 2017-07-27 16:00 | 0.38d |  |  | 32h | 3,072 |
| 126 | 2.6.10.1 | Clases de contacto | 2h | 2017-07-26 09:00 | 2017-07-26 11:00 | 1.75d | start no earlier than 2017-07-26 08:00 | BGRA_PROGRA | 2h | 192 |
| 127 | 2.6.10.2 | **Controlador** | 1.62d | 2017-07-26 09:00 | 2017-07-27 16:00 | 0.38d |  |  | 20h | 1,920 |
| 128 | 2.6.10.2.1 | Alta | 5h | 2017-07-26 09:00 | 2017-07-26 16:00 | 1.38d | finish no earlier than 2017-07-26 16:00 | BGRA_PROGRA | 5h | 480 |
| 129 | 2.6.10.2.2 | Consulta | 5h | 2017-07-26 09:00 | 2017-07-26 16:00 | 1.38d | finish no earlier than 2017-07-26 16:00 | BGRA_PROGRA | 5h | 480 |
| 130 | 2.6.10.2.3 | Modificación | 5h | 2017-07-26 09:00 | 2017-07-26 16:00 | 1.38d | finish no earlier than 2017-07-26 16:00 | BGRA_PROGRA | 5h | 480 |
| 131 | 2.6.10.2.4 | Baja | 5h | 2017-07-27 09:00 | 2017-07-27 16:00 | 0.38d | finish no earlier than 2017-07-27 16:00 | BGRA_PROGRA | 5h | 480 |
| 132 | 2.6.10.3 | Vistas/interfaz | 5h | 2017-07-27 09:00 | 2017-07-27 16:00 | 0.38d | finish no earlier than 2017-07-27 16:00 | BGRA_PROGRA | 5h | 480 |
| 133 | 2.6.10.4 | Reportes | 5h | 2017-07-27 09:00 | 2017-07-27 16:00 | 0.38d | finish no earlier than 2017-07-27 16:00 | BGRA_PROGRA | 5h | 480 |
| 134 | 2.6.11 | Hito de codificación | 0.62d | 2017-07-27 09:00 | 2017-07-27 16:00 | 0.38d | finish no earlier than 2017-07-27 16:00 | YSCG_ADMINPRO; BGRA_PROGRA | 10h | 1,005 |

| ID | WBS | Task | Duration | Start | Finish | Predecessors | Total slack | Free slack | Constraint | Resources | Work | Cost |
| --- | --- | --- | --- | --- | --- | --- | --- | --- | --- | --- | --- | --- |
| 135 | 2.7 | **Pruebas** | 11d | 2017-07-27 16:00 | 2017-08-09 16:00 | 67 | 0.38d |  |  |  | 160h | 5,824 |
| 136 | 2.7.1 | **Caja blanca** | 5d | 2017-07-27 16:00 | 2017-08-02 16:00 |  | 0.38d | 0d |  |  | 64h | 5,824 |
| 137 | 2.7.1.1 | **Módulo de usuario** | 0.5d | 2017-07-27 16:00 | 2017-07-28 10:00 |  | 12.88d |  |  |  | 8h | 728 |
| 138 | 2.7.1.1.1 | Pruebas unitarias | 4h | 2017-07-27 16:00 | 2017-07-28 10:00 |  | 12.88d |  |  | JCGC_TÉSTER | 4h | 364 |
| 139 | 2.7.1.1.2 | Pruebas de módulo | 4h | 2017-07-27 16:00 | 2017-07-28 10:00 |  | 12.88d |  |  | JCGC_TÉSTER | 4h | 364 |
| 140 | 2.7.1.2 | **Módulo de categorías** | 0.5d | 2017-07-27 16:00 | 2017-07-28 10:00 |  | 12.88d |  |  |  | 8h | 728 |
| 141 | 2.7.1.2.1 | Pruebas unitarias | 4h | 2017-07-27 16:00 | 2017-07-28 10:00 |  | 12.88d |  |  | JCGC_TÉSTER | 4h | 364 |
| 142 | 2.7.1.2.2 | Pruebas de módulo | 4h | 2017-07-27 16:00 | 2017-07-28 10:00 |  | 12.88d |  |  | JCGC_TÉSTER | 4h | 364 |
| 143 | 2.7.1.3 | **Módulo de productos** | 0.5d | 2017-07-27 16:00 | 2017-07-28 10:00 |  | 12.88d |  |  |  | 8h | 728 |
| 144 | 2.7.1.3.1 | Pruebas unitarias | 4h | 2017-07-27 16:00 | 2017-07-28 10:00 |  | 12.88d |  |  | JCGC_TÉSTER | 4h | 364 |
| 145 | 2.7.1.3.2 | Pruebas de módulo | 4h | 2017-07-27 16:00 | 2017-07-28 10:00 |  | 12.88d |  |  | JCGC_TÉSTER | 4h | 364 |
| 146 | 2.7.1.4 | **Módulo de ventas** | 1.75d | 2017-07-28 08:00 | 2017-07-29 16:00 |  |  |  |  |  | 8h | 728 |
| 147 | 2.7.1.4.1 | Pruebas unitarias | 4h | 2017-07-28 09:00 | 2017-07-28 13:00 |  | 12.5d |  |  | JCGC_TÉSTER | 4h | 364 |
| 148 | 2.7.1.4.2 | Pruebas de módulo | 4h | 2017-07-28 09:00 | 2017-07-28 13:00 |  | 12.5d |  |  | JCGC_TÉSTER | 4h | 364 |
| 149 | 2.7.1.5 | **Módulo comentarios** | 1.75d | 2017-07-28 08:00 | 2017-07-29 16:00 |  |  |  |  |  | 8h | 728 |
| 150 | 2.7.1.5.1 | Pruebas unitarias | 4h | 2017-07-28 09:00 | 2017-07-28 13:00 |  | 12.5d |  |  | JCGC_TÉSTER | 4h | 364 |
| 151 | 2.7.1.5.2 | Pruebas de módulo | 4h | 2017-07-28 09:00 | 2017-07-28 13:00 |  | 12.5d |  |  | JCGC_TÉSTER | 4h | 364 |
| 152 | 2.7.1.6 | **Módulo promociones** | 0.75d | 2017-07-31 08:00 | 2017-07-31 16:00 |  |  |  |  |  | 8h | 728 |
| 153 | 2.7.1.6.1 | Pruebas unitarias | 4h | 2017-07-31 09:00 | 2017-07-31 13:00 |  | 10.5d |  |  | JCGC_TÉSTER | 4h | 364 |
| 154 | 2.7.1.6.2 | Pruebas de módulo | 4h | 2017-07-31 09:00 | 2017-07-31 13:00 |  | 10.5d |  |  | JCGC_TÉSTER | 4h | 364 |
| 155 | 2.7.1.7 | **Módulo mi carrito** | 1.75d | 2017-08-01 08:00 | 2017-08-02 16:00 |  |  |  |  |  | 8h | 728 |
| 156 | 2.7.1.7.1 | Pruebas unitarias | 4h | 2017-08-01 09:00 | 2017-08-01 13:00 |  | 9.5d |  |  | JCGC_TÉSTER | 4h | 364 |
| 157 | 2.7.1.7.2 | Pruebas de módulo | 4h | 2017-08-01 09:00 | 2017-08-01 13:00 |  | 9.5d |  |  | JCGC_TÉSTER | 4h | 364 |
| 158 | 2.7.1.8 | **Módulo contacto** | 0.5d | 2017-08-02 09:00 | 2017-08-02 13:00 |  | 8.5d |  |  |  | 8h | 728 |
| 159 | 2.7.1.8.1 | Pruebas unitarias | 4h | 2017-08-02 09:00 | 2017-08-02 13:00 |  | 8.5d |  | start no earlier than 2017-08-02 08:00 | JCGC_TÉSTER | 4h | 364 |
| 160 | 2.7.1.8.2 | Pruebas de módulo | 4h | 2017-08-02 09:00 | 2017-08-02 13:00 |  | 8.5d |  | start no earlier than 2017-08-02 08:00 | JCGC_TÉSTER | 4h | 364 |
| 161 | 2.7.2 | Hito de pruebas | 6d | 2017-08-02 16:00 | 2017-08-09 16:00 | 136 | 8.38d |  | finish no earlier than 2017-08-02 16:00 | YSCG_ADMINPRO; JCGC_TÉSTER | 96h |  |

| ID | WBS | Task | Type | Duration | Start | Finish | Predecessors | Total slack | Free slack | Constraint | Resources | Work | Cost |
| --- | --- | --- | --- | --- | --- | --- | --- | --- | --- | --- | --- | --- | --- |
| 162 | 2.8 | **Integración** |  | 1.75d | 2017-08-03 08:00 | 2017-08-04 16:00 |  |  |  |  |  | 8h | 728 |
| 163 | 2.8.1 | Pruebas de integración |  | 1d | 2017-08-03 09:00 | 2017-08-03 19:00 |  | 9.38d | 0.62d |  | JCGC_TÉSTER | 8h | 728 |
| 164 | 2.8.2 | Hito de integración | milestone | 0d | 2017-08-04 16:00 | 2017-08-04 16:00 | 163 | 12.38d |  | finish no earlier than 2017-08-04 16:00 | YSCG_ADMINCONF; BGRA_VV; JCGC_ASEGURADOR |  |  |
| 165 | 2.9 | **Implementación** |  | 0.62d | 2017-08-05 09:00 | 2017-08-05 16:00 | 162 | 8.38d | 0.38d |  |  | 20h | 1,985 |
| 166 | 2.9.1 | Lista de hosting |  | 5h | 2017-08-05 09:00 | 2017-08-05 16:00 |  | 8.38d |  | finish no earlier than 2017-08-05 16:00 | YSCG_ADMINPRO | 5h | 525 |
| 167 | 2.9.2 | Evaluación de hosting |  | 5h | 2017-08-05 09:00 | 2017-08-05 16:00 |  | 8.38d |  | finish no earlier than 2017-08-05 16:00 | YSCG_ADMINPRO | 5h | 525 |
| 168 | 2.9.3 | Montar el sitio en el hosting |  | 5h | 2017-08-05 09:00 | 2017-08-05 16:00 |  | 8.38d |  | finish no earlier than 2017-08-05 16:00 | BGRA_PROGRA | 5h | 480 |
| 169 | 2.9.4 | Pruebas de sistema |  | 5h | 2017-08-05 09:00 | 2017-08-05 16:00 |  | 8.38d |  | finish no earlier than 2017-08-05 16:00 | JCGC_TÉSTER | 5h | 455 |
| 170 | 2.9.5 | Hito de implementación | milestone | 0d | 2017-08-05 16:00 | 2017-08-05 16:00 |  | 8.38d |  | finish no earlier than 2017-08-05 16:00 | YSCG_ADMINPRO |  |  |
| 171 | 2.10 | **Cierre de proyecto** |  | 5.62d | 2017-08-07 09:00 | 2017-08-12 16:00 | 165 | 5.38d |  |  |  | 40h | 4,184 |
| 172 | 2.10.1 | Carta de aceptación |  | 3h | 2017-08-07 09:00 | 2017-08-07 12:00 |  | 10.62d |  | start no earlier than 2017-08-07 08:00 | YSCG_ADMINPRO | 3h | 315 |
| 173 | 2.10.2 | Acta de cierre de proyecto |  | 3h | 2017-08-07 09:00 | 2017-08-07 12:00 |  | 10.62d |  | start no earlier than 2017-08-07 08:00 | YSCG_ADMINPRO | 3h | 315 |
| 174 | 2.10.3 | Evaluación de desempeño |  | 2h | 2017-08-07 09:00 | 2017-08-07 11:00 |  | 10.75d |  | start no earlier than 2017-08-07 08:00 | YSCG_ADMINCONF | 2h | 194 |
| 175 | 2.10.4 | Junta de lecciones aprendidas |  | 3h | 2017-08-08 09:00 | 2017-08-08 12:00 |  | 9.62d |  | start no earlier than 2017-08-08 08:00 | YSCG_ADMINPRO | 3h | 315 |
| 176 | 2.10.5 | Revisión de adherencias |  | 3h | 2017-08-08 09:00 | 2017-08-08 12:00 |  | 9.62d |  | start no earlier than 2017-08-08 08:00 | YSCG_ADMINPRO | 3h | 315 |
| 177 | 2.10.6 | Liberación de recursos |  | 2h | 2017-08-09 09:00 | 2017-08-09 11:00 |  | 8.75d |  | start no earlier than 2017-08-09 08:00 | YSCG_ADMINPRO | 2h | 210 |
| 178 | 2.10.7 | Informe final (Cierre) |  | 3d | 2017-08-09 09:00 | 2017-08-11 19:00 |  | 6d |  | start no earlier than 2017-08-09 08:00 | YSCG_ADMINPRO | 24h | 2,520 |
| 179 | 2.10.8 | Hito de cierre de proyecto | milestone | 0d | 2017-08-12 16:00 | 2017-08-12 16:00 |  | 5.38d |  | finish no earlier than 2017-08-12 16:00 | YSCG_ADMINPRO |  |  |
| 184 | 3 | **Revisión** |  | 81d | 2017-05-06 08:00 | 2017-08-12 08:00 |  | 0d |  |  |  |  |  |
| 185 | 3.1 | Revisión 1 | milestone, manual | 0d | 2017-05-06 08:00 | 2017-05-06 08:00 |  |  |  | start no earlier than 2017-05-06 08:00 |  |  |  |
| 186 | 3.2 | Revisión 2 | milestone, manual | 0d | 2017-05-13 08:00 | 2017-05-13 08:00 |  |  |  | start no earlier than 2017-05-13 08:00 |  |  |  |
| 187 | 3.3 | Revisión 3 | milestone, manual | 0d | 2017-05-20 08:00 | 2017-05-20 08:00 |  |  |  | start no earlier than 2017-05-20 08:00 |  |  |  |
| 188 | 3.4 | Revisión 4 | milestone, manual | 0d | 2017-05-27 08:00 | 2017-05-27 08:00 |  |  |  | start no earlier than 2017-05-27 08:00 |  |  |  |
| 189 | 3.5 | Revisión 5 | milestone, manual | 0d | 2017-06-03 08:00 | 2017-06-03 08:00 |  |  |  | start no earlier than 2017-06-03 08:00 |  |  |  |
| 190 | 3.6 | Revisión 6 | milestone, manual | 0d | 2017-06-10 08:00 | 2017-06-10 08:00 |  |  |  | start no earlier than 2017-06-10 08:00 |  |  |  |
| 191 | 3.7 | Revisión 7 | milestone, manual | 0d | 2017-06-17 08:00 | 2017-06-17 08:00 |  |  |  | start no earlier than 2017-06-17 08:00 |  |  |  |
| 192 | 3.8 | Revisión 8 | milestone, manual | 0d | 2017-06-24 08:00 | 2017-06-24 08:00 |  |  |  | start no earlier than 2017-06-24 08:00 |  |  |  |
| 193 | 3.9 | Revisión 9 | milestone, manual | 0d | 2017-07-01 08:00 | 2017-07-01 08:00 |  |  |  | start no earlier than 2017-07-01 08:00 |  |  |  |
| 194 | 3.10 | Revisión 10 | milestone, manual | 0d | 2017-07-08 08:00 | 2017-07-08 08:00 |  |  |  | start no earlier than 2017-07-08 08:00 |  |  |  |
| 195 | 3.11 | Revisión 11 | milestone, manual | 0d | 2017-07-15 08:00 | 2017-07-15 08:00 |  |  |  | start no earlier than 2017-07-15 08:00 |  |  |  |
| 196 | 3.12 | Revisión 12 | milestone, manual | 0d | 2017-07-22 08:00 | 2017-07-22 08:00 |  |  |  | start no earlier than 2017-07-22 08:00 |  |  |  |
| 197 | 3.13 | Revisión 13 | milestone, manual | 0d | 2017-07-29 08:00 | 2017-07-29 08:00 |  |  |  | start no earlier than 2017-07-29 08:00 |  |  |  |
| 198 | 3.14 | Revisión 14 | milestone, manual | 0d | 2017-08-05 08:00 | 2017-08-05 08:00 |  |  |  | start no earlier than 2017-08-05 08:00 |  |  |  |
| 199 | 3.15 | Revisión 15 | milestone, manual | 0d | 2017-08-12 08:00 | 2017-08-12 08:00 |  |  |  | start no earlier than 2017-08-12 08:00 |  |  |  |
